ID,Milestone,Priority,Task,DependsOn,Acceptance,Source,Owner,Status,Evidence,CompletedAt,Notes,Start,End
W001,M0,P0,受領v2のgit状態/差分/既存設計を確認,,v2基準のSHAと未コミット作業が記録される,docs/FEATURE_BOX_STATUS.md,Claude Code,DONE,基準SHA 64d4dbb・未コミットは docs/ux-autonomous/ のみ（今回の受領資料）,2026-11-21 17:26,,2026-11-21,2026-11-21
W002,M0,P0,npm run check基準ログ保存,W001,PASS/FAIL/NOT_RUNを正確に記録,app/package.json,Claude Code,DONE,docs/ux-autonomous/BASELINE_CHECK.log：tsc/eslint/vitest 50件/build すべてPASS (64d4dbb),2026-11-21 17:26,,2026-11-21,2026-11-21
W003,M0,P1,旧参考UI4枚とv2の比較スクリーンショットを用意,W001,旧4画像のUX意図と現画面の差分を説明できる,reference_ui/,Claude Code,DONE,参考4枚を目視し、体験の要点を docs/UX_AUTONOMOUS_REPORT.md に記録（画面ファイルとしての比較スクショは保存していない） (61267b1),2026-11-21 17:41,,2026-11-21,2026-11-21
W004,M1,P0,追加復元カテゴリID衝突の失敗テスト,W002,異カテゴリ同IDで誤紐づき回避,app/src/lib/backup.ts:127-139,Claude Code,DONE,tests/restore-safety.test.ts A03（先に失敗を確認→修正後PASS） (e49c2b0),2026-11-21 17:30,,2026-11-21,2026-11-21
W005,M1,P0,追加復元資格/勉強ログID衝突の失敗テスト,W002,ログ参照が正しい/拒否される,app/src/lib/backup.ts:135-138,Claude Code,DONE,tests/restore-safety.test.ts A04 (e49c2b0),2026-11-21 17:30,,2026-11-21,2026-11-21
W006,M1,P0,安全な追加復元または一時無効化,W004;W005,復元後validate成功か安全に拒否,app/src/lib/backup.ts:106-139,Claude Code,DONE,backup.ts applyRestore：競合・参照食い違いを除外し結果を validateAppData で再検証、失敗時は保存データを返さない (e49c2b0),2026-11-21 17:30,,2026-11-21,2026-11-21
W007,M1,P0,復元前の差分・競合・失敗リスクを表示,W006,復元で何が追加/維持されるか明確,app/src/app/settings/page.tsx:90-105,Claude Code,DONE,画面確認：競合カテゴリ＋中身違い取引のバックアップで『追加2件・同じ20件・内容違い2件・参照違い1件』表示、キャンセルで不変、追加後に競合分は入らない (5be45b3),2026-11-21 17:38,,2026-11-21,2026-11-21
W008,M1,P0,v1/v2復元・壊れたJSON・保存失敗の回帰,W006,すべてPASS、原データ保持,app/src/lib/schema.ts,Claude Code,DONE,tests：v1/v2・壊れたJSON・チェックサム・参照なし・0件・保存失敗（storage-backup/v2/restore-safety）68件PASS (e49c2b0),2026-11-21 17:30,,2026-11-21,2026-11-21
W009,M1,P1,資格削除と関連ログ削除を安全確認,W008,件数表示と取消・保存失敗検証,app/src/lib/store.tsx:165-171,Claude Code,DONE,画面確認：確認文に勉強記録2件と表示、キャンセルで1/2件維持、容量不足を模擬して削除→エラー表示・1/2件維持 (5be45b3),2026-11-21 17:38,,2026-11-21,2026-11-21
W010,M1,P1,NISA制度/簿価/売却翌年復活の境界テスト,W002,公的制度/内部計算と一致,app/src/lib/nisa.ts,Claude Code,DONE,restore-safety：同年売却で戻らない・翌年復活・2024年より前を除外／v2.test の枠テスト (e49c2b0),2026-11-21 17:30,,2026-11-21,2026-11-21
W011,M1,P1,繰返し予定の31日/2月29日/終了日テスト,W002,仕様どおりの全境界,app/src/lib/aggregate.ts:50-61,Claude Code,DONE,restore-safety A09：終了日当日・翌月・閏年／v2.test 月末・2/29 (e49c2b0),2026-11-21 17:30,,2026-11-21,2026-11-21
W012,M2,P0,ホームの予定・残予算・主要CTAを点検,W008,起動3秒で今日の予定/残額/行動を把握,app/src/app/page.tsx,Claude Code,DONE,画面確認375px：今月あと使える＋今日の支出、今日の予定2件＋残りはカレンダーへ、支出を追加/画像を見ながら記録 (5be45b3),2026-11-21 17:38,,2026-11-21,2026-11-21
W013,M2,P0,常設+から支出/収入/予定を選択,W012,3導線が全画面から開始可能,app/src/components/AppShell.tsx,Claude Code,DONE,中央の＋→支出/収入/予定/タスクの選択シート（AddChooser） (5be45b3),2026-11-21 17:38,,2026-11-21,2026-11-21
W014,M2,P0,カレンダー日選択を登録フォームへ引継ぐ,W013,選択日で支出/予定/収入が登録される,app/src/app/calendar/page.tsx,Claude Code,DONE,画面確認：11/25を選んで＋→支出→日付2026-11-25で保存・同日に表示 (5be45b3),2026-11-21 17:38,,2026-11-21,2026-11-21
W015,M2,P0,カレンダー日別の予定・金額・期限を整理,W014,1日で見る情報が分かり詳細へ遷移,app/src/app/calendar/page.tsx,Claude Code,DONE,画面確認：25日に予定＋支出＋契約更新日（期限・記録）、カレンダーに期限の印 (5be45b3),2026-11-21 17:38,,2026-11-21,2026-11-21
W016,M2,P0,月次振り返り/レポートの導線を追加,W012,2操作以内に確認,app/src/app/history/page.tsx,Claude Code,DONE,下のメニューに『振り返り』（1タップ）、ホームのカードからも (5be45b3),2026-11-21 17:38,,2026-11-21,2026-11-21
W017,M2,P1,前月/週比較・カテゴリ内訳を表示,W016,記録から算出/0件時は捏造なし,app/src/lib/aggregate.ts,Claude Code,DONE,report.ts＋tests/report.test.ts 8件、画面で内訳・週ごと・先月比を確認 (5be45b3),2026-11-21 17:38,,2026-11-21,2026-11-21
W018,M2,P1,レポート内訳→履歴明細の導線,W017,修正する元記録に到達,app/src/app/history/page.tsx,Claude Code,DONE,"画面確認：振り返りの食費→/history?m=2026-11&cat=exp-1、合計¥12,360一致 (5be45b3)",2026-11-21 17:38,,2026-11-21,2026-11-21
W019,M2,P1,くらしの気づき（根拠付き）を最小表示,W017,数値出典と詳細リンクを確認,app/src/app/page.tsx,Claude Code,DONE,ホームに気づき1件・振り返りに全件。データ0件・先月なしでは出ない（テスト） (5be45b3),2026-11-21 17:38,,2026-11-21,2026-11-21
W020,M3,P0,今日のナビ7件以上の全件導線,W012,全件到達・重要通知を見失わない,app/src/app/page.tsx:154-175,Claude Code,DONE,画面確認：7件のナビ→3件＋すべて見る→7件すべてリンク (5be45b3),2026-11-21 17:38,,2026-11-21,2026-11-21
W021,M3,P1,今日のナビ→個別タスク/契約等へ,W020,対象に直接/強調して到達,app/src/lib/navi.ts,Claude Code,DONE,画面確認：ナビの契約→/contracts?open=c1で『契約を編集』が開く (5be45b3),2026-11-21 17:38,,2026-11-21,2026-11-21
W022,M3,P1,バックアップ案内を全領域利用に拡張,W008,タスクのみでも適切に案内,app/src/lib/navi.ts:76-79,Claude Code,DONE,navi：全領域で判定（restore-safety：タスクのみで案内・0件で出ない） (e49c2b0),2026-11-21 17:30,,2026-11-21,2026-11-21
W023,M3,P1,メニュー頻用領域と準備中の階層改善,W013,頻用機能2操作以内/準備中誤認なし,app/src/app/menu/page.tsx,Claude Code,DONE,メニュー：よく使う（取引履歴・固定費・タスク・バックアップ）を先頭、準備中はいちばん下に分離。画面確認 (61267b1),2026-11-21 17:41,,2026-11-21,2026-11-21
W024,M3,P1,固定費からの支出記録・次回日付の確認,W008,一度の記録で重複を防ぎ次回日付更新,app/src/lib/store.tsx:105-119,Claude Code,DONE,画面確認：支払いを記録→保存を2回押しても取引は1件、次回日付 11/21→12/21 (61267b1),2026-11-21 17:41,,2026-11-21,2026-11-21
W025,M3,P1,旧UXに寄せたUI日本語統一,W012,07コピーガイドの対象を手動検査,app/src/app/*/page.tsx,Claude Code,DONE,07コピーガイドの対象（今月あと使える・支出の内訳・何に使った？・すべての機能・買付・売却を記録・達成率・勉強記録の文・重複の文・置き換え確認）を反映 (61267b1),2026-11-21 17:41,,2026-11-21,2026-11-21
W026,M3,P1,画像入口をOCRと誤認しない表記へ,W025,選択前に手入力と分かる,app/src/app/import/page.tsx,Claude Code,DONE,ホームの入口『画像を見ながら記録／自動読み取りは未対応』、画面名も同じ (61267b1),2026-11-21 17:41,,2026-11-21,2026-11-21
W027,M3,P1,共有/AI/連携/ウィジェットの準備中表示,W023,触っても使えると誤解しない,app/src/app/menu/page.tsx,Claude Code,DONE,準備中の4つはメニュー最下部『準備中（まだ使えません）』＋各項目の印。入力欄・送信ボタンなし (61267b1),2026-11-21 17:41,,2026-11-21,2026-11-21
W028,M4,P0,スマホ375/390pxの入力・保存ボタン試験,W025,横はみ出しなし/主要入力完了,app/src/components/Sheet.tsx,Claude Code,DONE,全21画面を320/375/390pxで横はみ出しなし（iframe計測）、入力シートで保存できることを画面確認 (61267b1),2026-11-21 17:41,,2026-11-21,2026-11-21
W029,M4,P0,iPhone Safari実機キーボード/日付試験,W028,実機で保存/戻る/日付選択を確認,app/src/components/Sheet.tsx,Claude Code,DONE,iPhone 実機で v5 の予定の追加（詳細・持ち物・キーボード・日付）・詳細（持ち物のチェック・Googleマップから戻る・Googleカレンダー）・旅行・資格を確認（平尾さんの報告 2026-11-22）,2026-11-22 12:42,キーボード（B12）と日付の入力（V17、11-22 平尾さん）を実機で確認済み,2026-11-25,2026-11-25
W030,M4,P0,旧UIの主要ジャーニー自動・手動受入,W015;W018;W021,A01-C07中実行対象すべてPASS,06_ACCEPTANCE_SCENARIOS.md,Claude Code,DONE,v5 の受入（docs/v5/ACCEPTANCE_V5.csv）と iPhone 実機で v5 の予定の追加（詳細・持ち物・キーボード・日付）・詳細（持ち物のチェック・Googleマップから戻る・Googleカレンダー）・旅行・資格を確認（平尾さんの報告 2026-11-22）,2026-11-22 12:42,自動テストとアプリ内ブラウザの分は v5 の受入（docs/v5/ACCEPTANCE_V5.csv）で確認。残りは iPhone 実機（V17）,2026-11-21,2026-11-23
W031,M4,P0,npm run checkとデータ復元回帰を再実行,W030,lint/type/test/build合格、件数一致,app/package.json,Claude Code,DONE,npm run check：tsc・eslint・vitest 76件・build すべてPASS (61267b1),2026-11-21 17:41,,2026-11-21,2026-11-21
W032,M4,P1,友人β向け個人データ・注意書きを確認,W031,保存場所・バックアップ責任の説明,app/src/app/settings/page.tsx,Claude Code,DONE,docs/RELEASE_PREP.md 5章：友人への一言を v5 に合わせて更新、渡す前に確かめること（URL だけ渡す・外へ送らない・バックアップの扱い・同意）,2026-11-22 16:28,チャッピーのレビュー（v4）と一緒に見る,2026-11-23,2026-11-24
W033,M5,P0,友人βのタスクシナリオ実施,W029;W031,友人テスト実施結果と課題台帳,外部利用者,User,IN_PROGRESS,2026-11-23 に友人1人へ公開 URL とテストのシート1章を送った（平尾さん）。7日目は 11-30,,B16 と同じ（友人1人・1週間）。試してほしいこと・聞く日・記録のしかた：docs/release/FRIEND_BETA_TEST_SHEET.md,2026-11-26,2026-12-02
W034,M5,P0,P0不具合ゼロを確認しβ判定,W033,重大障害0・影響既知/未知を評価,docs/UX_BUGS.md,User,NOT_STARTED,,,,2026-12-03,2026-12-03
W035,M6,P0,公開・配布のリスク/プライバシー最終判定,W034,GO/NO-GO文書をユーザー承認,09_RELEASE_ROADMAP.md,User,NOT_STARTED,,,B17 と同じ,2026-12-03,2026-12-04
W036,M6,P1,公開手順とロールバック手順準備,W035,安全に配布/戻せる（勝手に公開しない）,docs/UX_AUTONOMOUS_REPORT.md,Claude Code,DONE,docs/RELEASE_PREP.md 4章（戻し方）・4b章（公開したあとの直し方）,2026-11-23,並行して進めた（依存先の完了を待たずに着手）。依存の宣言は履歴として残す（2026-11-25 台帳の整理）,2026-12-04,2026-12-04
W037,M7,P2,利用実態から改善優先度の見直し,W033,課題優先度/対応時期/責任者更新,10_PARENT_WBS.csv,Claude Code,NOT_STARTED,,,,2026-12-03,2026-12-05
W038,M0,P0,親フォルダにROADMAP/WBS/STATUS同期,W001,他PJ未変更/同期先記録,11_STATUS_TEMPLATE.md,Claude Code,DONE,親フォルダ 00_全体進捗/暮らしベース/ に WBS/ROADMAP/STATUS を同期（docs/parent_progress_export にも）,2026-11-21 17:43,,2026-11-21,2026-11-21
W039,M4,P0,親フォルダ進捗最終同期と引継ぎ,W031,証拠紐付DONEと残件を反映,11_STATUS_TEMPLATE.md,Claude Code,DONE,最終同期：根拠のある行だけDONE、残件はNOT_STARTED/NOT_RUN/IN_PROGRESS,2026-11-21 17:43,,2026-11-21,2026-11-21
B01,M0,P0,現行ブランチ・元データの保護,,変更/コミット/バックアップ確認,受領 kurashi_v3_friend_beta 04_RELEASE_WBS,Claude Code,DONE,作業ブランチ beta/friend-v1 を 1713cbc から作成。未コミットの変更なし。localStorage キー・データ形式は変更なし,2026-11-22,,2026-11-22,2026-11-22
B02,M1,P0,差分パッチのレビューと移植,B01,変更内容の整合性と安全な反映,受領 kurashi_v3_friend_beta 04_RELEASE_WBS,Claude Code,DONE,12ファイル＋guide＋テストを1件ずつ差分確認して取り込み（42525ba）。tsbuildinfo は取り込まない,2026-11-22,,2026-11-22,2026-11-22
B03,M1,P0,復元の例外・参照・ID重複の回帰,B02,再現テスト作成しPASS,受領 kurashi_v3_friend_beta 04_RELEASE_WBS,Claude Code,DONE,tests/beta-hardening.test.ts・data-protection.test.ts PASS。直前の操作の取り消しを追加（592f084）,2026-11-22,,2026-11-22,2026-11-22
B04,M1,P0,複数タブの上書き競合,B02,競合を通知し破壊しない,受領 kurashi_v3_friend_beta 04_RELEASE_WBS,Claude Code,DONE,単体テスト＋アプリ内ブラウザで再現：別タブの記録を残し、入力は保持、再保存で成功（592f084）,2026-11-22,,2026-11-22,2026-11-22
B05,M2,P0,ホームと＋の初回導線,B02,U01〜U05がPASS,受領 kurashi_v3_friend_beta 04_RELEASE_WBS,Claude Code,DONE,アプリ内ブラウザ 375px：まずは3つだけ→＋→支出→保存→ホーム反映を確認（ed06f10）。iPhone 実機は B12,2026-11-22,,2026-11-22,2026-11-22
B06,M2,P0,カレンダー・期限・ナビ直編集,B02,U06と試験日表示がPASS,受領 kurashi_v3_friend_beta 04_RELEASE_WBS,Claude Code,DONE,試験日の印→資格の編集、ナビのタスク→タスクの編集が開くことを画面で確認,2026-11-22,,2026-11-22,2026-11-22
B07,M2,P0,振り返りの月末・過去月比較,B02,境界日テストPASS,受領 kurashi_v3_friend_beta 04_RELEASE_WBS,Claude Code,DONE,月初・うるう年・年またぎ・31日のテスト PASS。過去月は「前月の支出」,2026-11-22,,2026-11-22,2026-11-22
B08,M3,P0,初回説明・日本語・空状態,B05,U09・U15・U17 PASS,受領 kurashi_v3_friend_beta 04_RELEASE_WBS,Claude Code,DONE,使い方の画面（追加・予算・カレンダー・バックアップへ移動できる）、設定の保存場所の説明。友人の理解度は未測定,2026-11-22,,2026-11-22,2026-11-22
B09,M3,P0,主要画面の入力しやすさ,B05,320〜430px・キーボード確認,受領 kurashi_v3_friend_beta 04_RELEASE_WBS,Claude Code/User,DONE,12画面×320/375/390/430px で横はみ出しなし。iPhone 実機でキーボード表示中に保存できる（GO10）。チャッピーの UI・UX レビュー v7 を反映（97a9bd6）,2026-11-22,チャッピーのレビュー（v4）を反映,2026-11-22,2026-11-24
B10,M4,P0,自動テスト・ビルド,B03,npm run check PASS,受領 kurashi_v3_friend_beta 04_RELEASE_WBS,Claude Code,DONE,npm run check PASS（テスト111件）3857d5d,2026-11-22,その後の件数：v5 で147件、最終修正で159件,2026-11-22,2026-11-22
B11,M4,P0,バックアップ実機操作,B10,書出→復元→記録一致,受領 kurashi_v3_friend_beta 04_RELEASE_WBS,User,DONE,iPhone 実機でバックアップを確認（平尾さんの報告 2026-11-22）,2026-11-22 11:09,,2026-11-22,2026-11-22
B12,M4,P0,iPhone Safari実機,B10,U02〜U12主要項目 PASS,受領 kurashi_v3_friend_beta 04_RELEASE_WBS,User,DONE,iPhone 実機でキーボード・表示・下部メニュー・支出追加を確認（平尾さんの報告とスクショ 2026-11-22）。日付ピッカー・取り消しは公開URLで確認,2026-11-22 11:09,,2026-11-22,2026-11-22
B13,M5,P0,GitHubリポジトリ整備,B10,秘密/個人データなし、README、コミット,受領 kurashi_v3_friend_beta 04_RELEASE_WBS,Claude Code,DONE,GitHub kkkaipppp/kurashi-base（Private）に master（b55bc2c）を push。秘密情報なし,2026-11-23,,2026-11-22,2026-11-25
B14,M5,P0,Vercel等へのデプロイ準備,B13,手順・環境の整理,受領 kurashi_v3_friend_beta 04_RELEASE_WBS,Claude Code,DONE,docs/RELEASE_PREP.md（Root Directory=app、環境変数なし、公開後の確認 R1〜R8、ロールバック）,2026-11-22,,2026-11-22,2026-11-22
B15,M5,P0,公開URLの作成,B14,ユーザー承認、HTTPSで起動,受領 kurashi_v3_friend_beta 04_RELEASE_WBS,User/Claude Code,DONE,https://kurashi-base-tau.vercel.app/（HTTPS・noindex・ソースマップなし・外への送信なし）。GO_EVIDENCE 3f,2026-11-23,,2026-11-25,2026-11-25
B16,M6,P0,友人β招待・フィードバック回収,B15,招待・不具合管理・更新計画,受領 kurashi_v3_friend_beta 04_RELEASE_WBS,User,IN_PROGRESS,2026-11-23 に友人1人へ公開 URL とテストのシート1章を送った（平尾さん）。7日目は 11-30,,友人1人に1週間使ってもらう（Q04・Q05 決定）。テストのシート：docs/release/FRIEND_BETA_TEST_SHEET.md、感想：docs/release/FRIEND_FEEDBACK.md,2026-11-26,2026-12-02
B17,M7,P1,β後の公開判断,B16,重大不具合0、利用実績、承認,受領 kurashi_v3_friend_beta 04_RELEASE_WBS,User,NOT_STARTED,,,,2026-12-03,2026-12-04
V01,M8,P0,v5 の追加項目でも既存データを壊さない,,v4 のデータ・バックアップがそのまま読める,受領 v5_plus_brand 08_品質とWBS,Claude Code,DONE,tests/v5-data.test.ts（旅行なしのデータ・v1・v4 バックアップの追加）(0ab8395),2026-11-22,,2026-11-22,2026-11-22
V02,M8,P0,日本語の全面再監査,V01,全画面の古い言い方を直し、見張りテスト,受領 v5_plus_brand 08_品質とWBS,Claude Code,DONE,tests/copy-v5.test.ts・docs/v5/ACCEPTANCE_V5.csv（COPY）(58d9339),2026-11-22,初見の友人での確認は V18,2026-11-22,2026-11-22
V03,M8,P0,ホームを3項目に絞る,V01,3秒で残り予算・今日の予定・今日やることが分かる,受領 v5_plus_brand 08_品質とWBS,Claude Code,DONE,アプリ内ブラウザ 320×700 で3項目が最初の画面 (61f62d8),2026-11-22,,2026-11-22,2026-11-22
V04,M8,P0,予定の最小入力,V01,予定名と日時だけで保存,受領 v5_plus_brand 08_品質とWBS,Claude Code,DONE,アプリ内ブラウザで保存・詳細を追加 (61f62d8),2026-11-22,,2026-11-22,2026-11-22
V05,M8,P0,予定の詳細,V04,場所・URL・メモ・持ち物を保存・編集,受領 v5_plus_brand 08_品質とWBS,Claude Code,DONE,アプリ内ブラウザ：詳細・持ち物のチェックが保存される (61f62d8),2026-11-22,,2026-11-22,2026-11-22
V06,M8,P0,日付の引き継ぎとカレンダー,V04,日付・時刻がずれない,受領 v5_plus_brand 08_品質とWBS,Claude Code,DONE,旅行の2日目→12/2が初期値（アプリ内ブラウザ）、外部リンクの日付は自動テスト,2026-11-22,戻る操作の BUG-07 は未対応,2026-11-22,2026-11-22
V07,M8,P1,旅行の行程,V05,日ごとの行程の一覧・編集,受領 v5_plus_brand 08_品質とWBS,Claude Code,DONE,アプリ内ブラウザ：旅行の追加→行程の追加→詳細 (bbb3002),2026-11-22,,2026-11-22,2026-11-22
V08,M8,P1,Googleマップ・Googleカレンダー・Web検索,V05,正しい外部 URL を開く,受領 v5_plus_brand 08_品質とWBS,Claude Code,DONE,tests/external-links.test.ts 8件＋画面の URL 確認 (53233ca),2026-11-22,外部サイトから戻る操作は iPhone で未確認,2026-11-22,2026-11-22
V09,M8,P1,資格の候補検索,V01,20件＋自由入力、別名で探せる,受領 v5_plus_brand 08_品質とWBS,Claude Code,DONE,アプリ内ブラウザ「簿記」→候補、自動テスト (75cc5ee),2026-11-22,,2026-11-22,2026-11-22
V10,M8,P1,勉強時間の目安と1日の目標,V09,出典を出す、日割りが正確,受領 v5_plus_brand 08_品質とWBS,Claude Code,DONE,自動テスト（10分切り上げ・当日・過去・うるう年）、画面で3時間20分 (75cc5ee),2026-11-22,,2026-11-22,2026-11-22
V11,M8,P1,参考書・note のリンク,V09,架空の商品なし、タグなし,受領 v5_plus_brand 08_品質とWBS,Claude Code,DONE,自動テスト（tag なし・note.com）(75cc5ee),2026-11-22,,2026-11-22,2026-11-22
V12,M8,P1,くらしベースのロゴ・表示名,V03,ヘッダー・タブ・アイコンで矛盾しない,受領 v5_plus_brand 08_品質とWBS,Claude Code,DONE,docs/BRAND_IMPLEMENTATION_REPORT.md（再現案）(61f62d8),2026-11-22,正式なロゴとするかは論点 Q21,2026-11-22,2026-11-22
V13,M8,P2,OCR データの利用条件の確認,,商用可否を記録し、未確認はブロック,受領 v5_plus_brand 08_品質とWBS,User/Claude Code,DONE,docs/OCR_DATA_LICENSE_CHECK.md（CORD v2 は CC BY 4.0、nano-receipts は MIT だが出どころが弱い。どちらも日本のレシートではない）,2026-11-22,ダウンロードとライブラリの導入は平尾さんの承認待ち（論点 Q22）,2026-11-26,2026-11-27
V14,M8,P2,"OCR 画像2,000件の取得と SHA の固定",V13,"2,000件・重複0・manifest",受領 v5_plus_brand 08_品質とWBS,Claude Code,BLOCKED,,,tools/ocr_benchmark に取得・検査のスクリプト（検査のテスト5件 OK）。画像は未取得,2026-11-27,2026-11-28
V15,M8,P2,OCR の実装と精度の基準,V14,GT つきの精度と未ラベルの耐性を分けて報告,受領 v5_plus_brand 08_品質とWBS,Claude Code,NOT_STARTED,,,OCR を入れるか（論点 Q10）と npm の追加の承認が先,2026-12-10,2026-12-20
V16,M8,P0,npm run check,V12,型・lint・テスト・ビルド PASS,受領 v5_plus_brand 08_品質とWBS,Claude Code,DONE,npm run check PASS（テスト147件）,2026-11-22,,2026-11-22,2026-11-22
V17,M8,P0,iPhone 実機で v5 の新しい画面,V16,入力・詳細・旅行・資格・外部リンクから戻る,受領 v5_plus_brand 08_品質とWBS,User,DONE,iPhone 実機で v5 の予定の追加（詳細・持ち物・キーボード・日付）・詳細（持ち物のチェック・Googleマップから戻る・Googleカレンダー）・旅行・資格を確認（平尾さんの報告 2026-11-22）,2026-11-22 12:42,CAL-017・018、TRIP-012 など,2026-11-23,2026-11-23
V18,M8,P0,初見の友人のテスト,V17,支出と予定を迷わず登録,受領 v5_plus_brand 08_品質とWBS,User,IN_PROGRESS,2026-11-23 に友人1人へ公開 URL とテストのシート1章を送った（平尾さん）。7日目は 11-30,,友人1人・1週間（論点 Q04・Q05 決定）,2026-11-26,2026-12-02
V19,M8,P0,友人β の GO 判定（v5）,V17,重大な不具合0・根拠つき,受領 v5_plus_brand 08_品質とWBS,Claude Code,DONE,GO14 と同じ：B01〜B15 全件 PASS＋平尾さんの承認（docs/release/GO_EVIDENCE_20261122.md 7章）,2026-11-23,docs/BETA_RELEASE_REPORT.md の v5 の章,2026-11-22,2026-11-25
V20,M8,P3,Amazon アソシエイトの適法性,,登録・申告・開示・承認,受領 v5_plus_brand 08_品質とWBS,User,NOT_STARTED,,,今はタグなしの通常リンク,2026-12-10,2026-12-12
V21,M8,P1,支出と旅行のひも付け,V07,旅行の支出を任意で関連付け,受領 v5_plus_brand 08_品質とWBS,Claude Code,NOT_STARTED,,,友人β では作らない（2026-11-22 平尾さん決定）。友人の感想を見てから決める。受入 TRIP-013。今は行程の「費用の目安」だけ,2026-11-24,2026-11-25
F01,M8,P0,予定の編集で空にした詳細が戻る不具合,,場所・URL・持ち物・旅行・種類・費用を空にして保存→再読み込みでも空,受領 v5_friend_beta_fix 01_改善指示,Claude Code,DONE,テスト RED→GREEN（beta-final-guard・beta-final-paths）、アプリ内ブラウザで場所と持ち物を消して保存→再読み込みで空 (e005b04),2026-11-22,,2026-11-22,2026-11-22
F02,M8,P0,追加復元で意味の違う同じIDの旅行に行程がつく不具合,,衝突した旅行の行程は取り込まない、旅行の参照を検査,受領 v5_friend_beta_fix 01_改善指示,Claude Code,DONE,テスト RED→GREEN＋境界テスト（置き換え・新しい旅行）(e005b04),2026-11-22,,2026-11-22,2026-11-22
F03,M8,P0,容量不足で既存の記録まで開けない不具合,,書き込めなくても読み込める、保存は失敗と表示,受領 v5_friend_beta_fix 01_改善指示,Claude Code,DONE,テスト RED→GREEN（window.localStorage の道で再現）(e005b04),2026-11-22,iPhone 実機での容量不足は再現していない,2026-11-22,2026-11-22
F04,M8,P0,復元の保存に失敗すると取り消しの控えを失う不具合,,前の控えに戻す、戻せなければ隠さない,受領 v5_friend_beta_fix 01_改善指示,Claude Code,DONE,テスト RED→GREEN（本体の失敗・控えの削除の失敗・競合）(e005b04),2026-11-22,localStorage は複数キーを一度に書けないため、強制終了の瞬間の窓はゼロにできない,2026-11-22,2026-11-22
F05,M8,P1,文言：Googleカレンダーで予定を作る・URL の案内・保存できないときの案内・バックアップの画面,F01,誤解のない言い方、折り返しの崩れなし,受領 v5_friend_beta_fix 01_改善指示,Claude Code,DONE,copy-v5 テスト、実画面のスクショ（375・390px）(6f7364f・d4718ff),2026-11-22,,2026-11-22,2026-11-22
F06,M8,P0,実画面のスクリーンショット,F05,ホーム・カレンダー・予定の追加と詳細と編集・バックアップを実アプリで撮る,受領 v5_friend_beta_fix 01_改善指示,Claude Code,DONE,docs/screens/2026-11-22_v5-fix_d4718ff（375×812）と _390（390×844）,2026-11-22,,2026-11-22,2026-11-22
F07,M8,P0,iPhone 実機で修正した流れを確かめる,F06,予定の詳細を消す→再起動、バックアップ→復元→取り消し→やり直し,受領 v5_friend_beta_fix 01_改善指示,User,DONE,GO08・GO09 と同じ（iPhone 実機、ddb5dc3、平尾さんの報告 2026-11-22）,2026-11-22 16:15,平尾さんの操作が必要,2026-11-23,2026-11-23
GO01,M8,P0,Git の戻り地点と作業ブランチ,,ブランチ beta/friend-go、基準 a6e7f00,受領 v5fix_GO_readiness 06_WBS,Claude Code,DONE,git switch -c beta/friend-go（a6e7f00 から）,2026-11-22,,2026-11-22,2026-11-22
GO02,M8,P0,すべて削除の完全な削除（wipeAllAppData）,GO01,控え・退避まで消え、ほかのアプリのキーは残る,受領 v5fix_GO_readiness 06_WBS,Claude Code,DONE,go-data-deletion 7件・go-paths、アプリ内ブラウザで B07 (28a7c74)。ddb5dc3 でやり直し（16:16）,2026-11-22,,2026-11-22,2026-11-22
GO03,M8,P0,削除の途中の失敗と戻し,GO02,RED→GREEN,受領 v5fix_GO_readiness 06_WBS,Claude Code,DONE,go-data-deletion（障害注入）RED→GREEN (28a7c74),2026-11-22,,2026-11-22,2026-11-22
GO04,M8,P0,同じ予定の2タブ編集で上書きしない,GO01,競合のとき保存をやめる,受領 v5fix_GO_readiness 06_WBS,Claude Code,DONE,アプリ内ブラウザ2タブで B09、go-paths (28a7c74)。点検役の指摘で資格・消された記録も対応、ddb5dc3 で2タブの確認をやり直し（16:13）,2026-11-22,,2026-11-22,2026-11-22
GO05,M8,P0,取引・旅行・固定費・タスクなどにも競合の確かめを広げる,GO04,金額・予定を黙って上書きしない,受領 v5fix_GO_readiness 06_WBS,Claude Code,DONE,go-paths（store の5つの更新・5つの画面）(28a7c74)。点検役の指摘で資格・消された記録も対応、ddb5dc3 で2タブの確認をやり直し（16:13）,2026-11-22,,2026-11-22,2026-11-22
GO06,M8,P0,容量不足の案内でサイトデータを消すように誘わない,,先にバックアップを案内,受領 v5fix_GO_readiness 06_WBS,Claude Code,DONE,アプリ内ブラウザで B06 (28a7c74)。ddb5dc3 でやり直し（16:15）,2026-11-22,,2026-11-22,2026-11-22
GO07,M8,P0,既存の回帰（v1/v2・復元・旅行・資格など）,GO02,全件 PASS,受領 v5fix_GO_readiness 06_WBS,Claude Code,DONE,npm run check PASS（テスト191件）(ddb5dc3),2026-11-22,,2026-11-22,2026-11-22
GO08,M8,P0,iPhone：予定の詳細を消す→開き直す（B02）,GO07,B02 PASS,受領 v5fix_GO_readiness 06_WBS,User,DONE,iPhone 実機（Safari、http://172.17.183.12:3211、ddb5dc3 のビルド）で予定の詳細を消す→開き直しても消えたまま（平尾さんの報告 2026-11-22）,2026-11-22 16:15,docs/release/IPHONE_CHECK_20261122.md の1〜3,2026-11-23,2026-11-23
GO09,M8,P0,iPhone：バックアップ→復元→取り消し→やり直し（B03・B04）,GO07,B03・B04 PASS,受領 v5fix_GO_readiness 06_WBS,User,DONE,iPhone 実機でバックアップの書き出し→ファイルアプリ→復元（置き換え）→取り消し→やり直し→開き直し（平尾さんの報告 2026-11-22、ddb5dc3）,2026-11-22 16:15,同じ手順の4〜6,2026-11-23,2026-11-23
GO10,M8,P0,iPhone：キーボード・二重保存（B13）,GO07,B13 PASS,受領 v5fix_GO_readiness 06_WBS,User,DONE,iPhone 実機でキーボード表示中に保存できる（平尾さんの報告 2026-11-22、ddb5dc3）,2026-11-22 16:15,同じ手順の1〜2,2026-11-23,2026-11-23
GO11,M8,P0,公開前の点検（秘密・noindex）（B15 の静的部分）,GO07,秘密・個人情報なし,受領 v5fix_GO_readiness 06_WBS,Claude Code,DONE,git grep・app/public・robots の確認、点検役,2026-11-22,公開 URL での点検は GO12,2026-11-22,2026-11-22
GO12,M8,P0,公開 URL での確認（B01・B14・B15 の公開部分）,GO11,公開 URL で PASS,受領 v5fix_GO_readiness 06_WBS,User/Claude Code,DONE,iPhone の Safari で公開 URL の R1〜R8 全部 OK（平尾さんの報告）。B01・B14・B15 PASS,2026-11-23,,2026-11-25,2026-11-25
GO13,M8,P1,ホーム・予定・設定の文言を短く,GO07,初見の迷いを減らす,受領 v5fix_GO_readiness 06_WBS,Claude Code,DONE,削除・復元・Googleカレンダーの文言、実画面のスクショ (28a7c74),2026-11-22,,2026-11-22,2026-11-22
GO14,M8,P0,友人β の GO 判定,GO08,B01〜B15 全件 PASS＋平尾さんの承認,受領 v5fix_GO_readiness 06_WBS,User/Claude Code,DONE,B01〜B15 全件 PASS＋平尾さんの承認（「①渡していい」）。docs/release/GO_EVIDENCE_20261122.md 7章,2026-11-23,,2026-11-22,2026-11-25
N00,M9,P0,NEXT v21：全資料の読了・現行との差分の分類・既存 WBS への統合,,READ_RECEIPT に33件すべて・分類（検証済み/未検証/一部/未実装/要検証/外部条件）,docs/v21/spec/CLAUDE_START.md,Claude Code,DONE,docs/v21/READ_RECEIPT.csv ほか,2026-11-25 01:21,読了台帳 docs/v21/READ_RECEIPT.csv、分類 docs/v21/CLASSIFICATION_A/B/C.md、統合 docs/v21/INTEGRATION.md,2026-11-25,2026-11-25
N01,M9,P0,T00 基準・費用・版・保存の成立性（費用台帳・保存の移行/復元の試験）,N00,P01–08・FOP01–05・A01–10・Q09・Q14（費用は承認が要るものを止める）,docs/v21/spec/PLATFORM_FEASIBILITY.md; FREE_OPERATIONS.md,Claude Code,IN_PROGRESS,費用台帳は docs/v21/CLASSIFICATION_C.md 4章（現状すべて0円。承認が要るもの：Apple 年99USD・Vercel 有償化・OCR 約5GB・npm 追加）。保存の移行・復元の試験は既存テストで一部。実機・費用の再確認は未実施,,費用は現状すべて0円。承認が必要：Apple 年99USD・Vercel 有償化・OCR 評価用約5GB・npm 追加,2026-11-25,
N02,M9,P0,共通の収支計算と二重計上の試験（X01〜X05）,N00,X01・X02・X03・X04・X05 を合成データで PASS,docs/v21/spec/FINAL_INTEGRATION.md,Claude Code,IN_PROGRESS,X01〜X05・X16 は合成データで PASS。X02：固定費の一部の支払い（2d317c2）・返金（4c3492c）。X03/X05：カード払い＝買った日に支出・引き落としは「カードの引き落とし」で収支に数えず現金だけ減らす・基準の残高がなければ残高を出さない（balance.ts・テスト7件）。実機・復元往復の追加試験は未実施,,D・F までで一部実装。カード/現金（X03）・部分実績（X02）は未実装,2026-11-25,
N03,M10,P0,T01 既存品質・会計照合・復元（Q01–15・D01–12）,N01;N02,Q01–15・D01–12・X01–05,docs/v21/spec/QUALITY_GATE.md; DOMAIN_DEPTH.md,Claude Code,IN_PROGRESS,H10 診断情報・Q09 データの点検・予定の複製（自分用）。4画面幅・VoiceOver・文字拡大は未確認,,並行して進めた（依存先の完了を待たずに着手）。依存の宣言は履歴として残す（2026-11-25 台帳の整理）,2026-11-25,
N04,M10,P1,T02 日本語・ガイド・設定・既存画面（H01–10・I01–10）,N03,H01–10・I01–10・Q04・Q12,docs/v21/spec/JAPANESE_UX.md; HELP_AND_RECOVERY.md; SCREENS.md; INTERACTION_DEPTH.md,Claude Code,IN_PROGRESS,ホームの二重表示の解消（3836c7f・62c14e5）。文言の置換表（J）は公開版に出るため平尾さんの OK 待ち,,公開版に出る文言の置換は平尾さんの OK を待つ；並行して進めた（依存先の完了を待たずに着手）。依存の宣言は履歴として残す（2026-11-25 台帳の整理）,2026-11-25,
N05,M10,P1,T03 既存の地図・グラフ・カレンダーの改善,N03,M01–03・CH:G01–04・CAL:C01–05,docs/v21/spec/MAP_NAVIGATION.md; FINANCIAL_CHARTS.md; CALENDAR_DEPTH.md,Claude Code,IN_PROGRESS,グラフに合計行と根拠の一文、カレンダーの表示の記憶・読み上げ、ICS の時刻の説明（e11d8be）。カレンダーの色の使い分け・選んだ日の復元（UI13。?d=・画面で確認）。地図・実機は未着手,,並行して進めた（依存先の完了を待たずに着手）。依存の宣言は履歴として残す（2026-11-25 台帳の整理）,2026-11-25,
N06,M11,P1,T04 CSV 汎用取込（CSV:C01–10・X11）。未閉鎖の引用符・固定費の前方一致・誤統合の弱点の修正から,N03,CSV:C01–10・X11,docs/v21/spec/CSV_IMPORT_DEPTH.md,Claude Code,IN_PROGRESS,CSV の弱点修正・汎用取り込み・取り込みの履歴と取り消し（c819f5f）。サービス別の専用対応・Worker・実サンプルの確認は未着手,,弱点3つは現行コードに実在（CLASSIFICATION_B 4章）；並行して進めた（依存先の完了を待たずに着手）。依存の宣言は履歴として残す（2026-11-25 台帳の整理）,2026-11-25,
N07,M11,P2,T05 OCR・共有・検索・個人化,N06,A01–08・B01・B08・B09,docs/v21/spec/AUTOMATION_EXPERIENCE.md; VALUE_DEPTH.md,Claude Code,IN_PROGRESS,横断検索・未整理の記録・文字の読み取り（iPhone・実機未確認）・検索語と種類の絞り込みの復元・カレンダーのファイル（.ics）の読み込み（Q31。自分用。tests/ics-import.test.ts 11件・書き出し→読み込みの往復・画面で取り込み/重複除外/取り消しを確認）。共有からの取り込み・Web の OCR は承認待ち/未着手,,OCR のデータ取得は OK が要る；並行して進めた（依存先の完了を待たずに着手）。依存の宣言は履歴として残す（2026-11-25 台帳の整理）,2026-11-25,
N08,M12,P2,T06 共通予定・目標・生活イベント,N03;N07,CAL:C01–15・Q06–07・X06–10,docs/v21/spec/GOAL_PLANNING.md; LIFE_PLANNING.md,Claude Code,IN_PROGRESS,予定の完了・延期・出発の目安・目標との予定・予定のない時間帯・目標のやること（節目の日つき。期限の一覧・提案に出る）・タスクを予定にする。地図の出発逆算は未着手。画面で確認済み（携帯幅）,,保存形式の変更を含むので migrate()・復元試験が先；並行して進めた（依存先の完了を待たずに着手）。依存の宣言は履歴として残す（2026-11-25 台帳の整理）,2026-11-25,
N09,M12,P2,T07 旅行・地図・支払予定・外部予定,N08,M01–10・X01–03・X09・X12,docs/v21/spec/MAP_NAVIGATION.md,Claude Code,IN_PROGRESS,旅行の ID つなぎ・コピー・通知（実機未確認）・出発の目安での通知。地図からの自動の出発逆算は外部の地図サービスの利用が要るため承認待ち。外部予定の取り込みは未着手,,外部 API は別承認；並行して進めた（依存先の完了を待たずに着手）。依存の宣言は履歴として残す（2026-11-25 台帳の整理）,2026-11-25,
N10,M13,P2,T08 予測・比較・提案,N09,G01–10・V01–08・X14・X23,docs/v21/spec/DECISION_SUPPORT.md,Claude Code,IN_PROGRESS,月末の見込み・週の見直し・目標のペース・買い物の判断・提案の集約・見込みのグラフ・シナリオ比べ（今のペース／変動費±20%／買い物。同じ範囲・テスト4件）。画面の見た目は未確認,,並行して進めた（依存先の完了を待たずに着手）。依存の宣言は履歴として残す（2026-11-25 台帳の整理）,2026-11-25,
N11,M14,P2,T09 長期分析・経験再利用,N10,B03・B07・Q11・X17,docs/v21/spec/VALUE_DEPTH.md,Claude Code,IN_PROGRESS,Q11 性能（10年相当で50ms以下・4.1MB。RAID R-06）・B03 生活の変化（適用日つき計画・押したときだけ適用・取り消せる・過去は変えない。携帯幅の画面で適用まで確認・テスト8件）。長期分析の残りは未着手,,,2026-11-25,
N12,M15,P2,T10 任意同期・端末内 AI・Watch の成立性（設計と検証まで）,N11,P01–08・X18・X20,docs/v21/spec/PLATFORM_FEASIBILITY.md,Claude Code,NOT_STARTED,,,費用・署名・権限は承認が必要,2026-11-25,
N13,M15,P2,T11 公開版の判定（対象 Phase の合格後。友人β の NO-GO を自動で解除しない）,N12,Q15・X21,docs/v21/spec/DELIVERY_PROCESS.md,Claude Code,NOT_STARTED,,,公開・push・デプロイは平尾さんの OK,2026-11-25,
N14,M10,P0,v22 G0（P0）：返金・カード債務・保存容量・復元の独立試験,N02,"返金10,000→3,000→7,000→最初の返金を取り消し→純支出3,000／カード債務（基準日以前100,000＋以後購入30,000−決済100,000＝未決済30,000）／保存容量のピーク計測",docs/v22/STRATEGY.md 5章,Claude Code,DONE,返金（g0-p0）・カード債務・保存容量のピーク（perf-10years）に加え、復元の往復（tests/backup-roundtrip.test.ts：localStorage・IndexedDB・取り消し・保存の失敗・別タブ・v1）。独立点検で重大・高・中なし。実機は A08 (1e8f802),2026-11-25 19:08,v22 レビュー 9b300f2-o3。返金・残高は自分用のみ,2026-11-25,
N15,M10,P1,v22 UI01〜16：既存の X/Q/H/T への照合と実測（重複登録しない）,N03,UI01〜16（docs/v22/UI_DESIGN.md）,docs/v22/UI_DESIGN.md,Claude Code,IN_PROGRESS,UI03 紫の線の廃止は実装済み。UI12 色のコントラスト：実測し、薄い補足・支出・予定・警告の色を濃くして全部 4.5:1 以上に（Q28）。UI13 検索語・種類・カレンダーの選んだ日の復元（画面で確認）。UI14 ホーム編集は、保存まで反映しない・やめる・はじめの並びに戻す・隠したカードの再表示が、すでにある（HomeLayout.tsx）。UI01・02・04・06・08〜11・15・16 は N03・N04・N05・N07・N08 に照合。320〜1280px・200%文字・VoiceOver・実機は未実施（NOT_RUN）,,UI01〜16 は N03・N04・N05・N07・N08 の受入に重ねて確認する（別の行を増やさない）,2026-11-25,
N16,M15,P3,v22 事業戦略 BIZ01〜10（収益化・広告・アフィリエイト）：設計の反映のみ。実装は承認後,N13,BIZ01〜10（docs/v22/STRATEGY.md 4章）・G1〜G6,docs/v22/STRATEGY.md,Claude Code,BLOCKED,設計の反映のみ（docs/v22 に原本、DECISIONS・RAID・ISSUES に記録）。実装・外部調査・実証は未実施,,承認が要る：商用ホスティング・ASP 契約・外部リンク・費用（初期 0円）・公開。承認前に広告を ON にしない。個人用は広告なし,2026-11-25,
N17,M10,P0,o11 A01 現行の依存・全書き込み経路の棚卸し,N14,全 route/store/bridge/backup の責任表・循環依存なし,docs/integration/REFORM_O11.md; docs/v22/ARCHITECTURE_O9.md,Claude Code,IN_PROGRESS,docs/integration/A01_INVENTORY.md（書き込みはすべて store.commit → storage.ts。lib→components の型 import が1件＝要修正）。feat の Swift 構成の確認は未,,,2026-11-25,
N18,M10,P0,o11 A02/A03 共通台帳（購入・返金・収入・カード決済・振替を別の出来事）と並行比較,N17,購入/返金/決済の保存則・カード別・日付境界・順序独立・旧 v1/v2 の golden fixture,docs/integration/REFORM_O11.md; docs/v22/ARCHITECTURE_O9.md,Claude Code,IN_PROGRESS,ledgerCore.ts・ledger-core.test.ts（200通り×6か月で今の集計と一致・うるう年でない2月/29〜31日/年またぎ・保存則・順序独立・変異で落ちる）・golden-fixtures.test.ts（旧v1・全項目）。残高を台帳から計算（返金日・購入日・現金移動日を分ける。点検 高1）。カード別・口座別は未（データモデルに ID なし）。画面への接続（A06）は未,,未知のカード開始債務は 0 と決めつけない（balance.ts の cardPendingKnown）,2026-11-25,
N19,M10,P0,o11 A04 Repository 境界と原子的な保存（Web は IndexedDB。iOS は Swift 構成の確認後に決める）,N18,同時更新で消失なし・原子的 commit・失敗注入,docs/integration/REFORM_O11.md; docs/v22/ARCHITECTURE_O9.md,Claude Code,IN_PROGRESS,idbRepository.ts（版の照合・控えと本体を同じトランザクション・取り消し/すべて削除/退避も版の照合つき）・idbAdapter.ts（保存の境界の形に合わせる・起動時に旧データを移す・BroadcastChannel でほかのタブへ知らせる・すべて削除で旧データも消す）。tests/idb-adapter.test.ts 10件（保存の中心の試験を IndexedDB でも通す＝段階B の条件①〜③）。アプリの保存先は未切替,,IndexedDB の単体試験には fake-indexeddb（npm の追加＝承認が要る）か、ブラウザでの試験が要る。保存を非同期にすると、全画面の「保存できたら成功」の作りが変わる（大きな変更）,2026-11-25,
N20,M10,P0,o11 A05 移行と復元（旧データ読取→検証→新DB staging→再読取・件数/金額/関連ID比較→切替。旧データは消さない）,N19,再実行可能・原本保持・件数と金額の一致・途中クラッシュからの回復,docs/integration/REFORM_O11.md; docs/v22/ARCHITECTURE_O9.md,Claude Code,IN_PROGRESS,自分用の版の保存先を IndexedDB に切り替え（store.tsx の defaultRepository）。ブラウザで、旧データの移行（件数一致・旧データは残る・印）・保存（版2）・再読み込み・2つのタブの同期を確認。公開版ビルドに IndexedDB の部品が入っていないことを確認（0件）。iPhone 実機・30年データ・旧版の再起動は未,,,2026-11-25,
N21,M10,P1,o11 A06 画面を共通台帳へ接続（全画面で同じ条件の金額が一致・予測と実績を分ける）,N18,全画面で同一条件の金額一致,docs/integration/REFORM_O11.md; docs/v22/ARCHITECTURE_O9.md,Claude Code,DONE,画面の金額を共通台帳から作る（docs/integration/A06_LEDGER_SCREENS.md）。旧実装と200通りで比べて同じ・画面どうしの一致・自分用の版・1.5万件の速さ（tests/a06-*.test.ts）。独立点検3回で重大・高・中なし。保存の形は変えていない。実機は A08 (1e8f802),2026-11-25 19:08,,2026-11-25,
N22,M15,P1,o11 A07 ネイティブ境界（実 Swift の確認・保存の正本を1つ・通知/OCR/ウィジェットの回帰）,N19,保存の正本が1つ・通知/OCR/ウィジェットの回帰,docs/integration/REFORM_O11.md; docs/v22/ARCHITECTURE_O9.md,Claude Code,NOT_STARTED,,,Mac と実機が要る,2026-11-25,
N23,M14,P1,o11 A08 性能・安全（1/5/10/30年の合成データ・容量・応答時間を実機で・外部送信なし）,N20,30年データ・容量不足・応答時間,docs/integration/REFORM_O11.md; docs/v22/ARCHITECTURE_O9.md,Claude Code,IN_PROGRESS,10年相当（Q11）の計算・容量は測定済み（tests/perf-10years.test.ts）。30年・実機・容量不足の注入は未,,,2026-11-25,
N24,M15,P0,o11 A09/A10 全体検証とリリース判定（両版の check・実機 E2E・重大欠陥ゼロ・最新 SHA で GO）,N21;N22;N23,両版の typecheck/lint/vitest/build・実機 E2E・重大欠陥ゼロ・最新 SHA で GO,docs/integration/REFORM_O11.md; docs/v22/ARCHITECTURE_O9.md,Claude Code,NOT_STARTED,,,公開・push は別承認,2026-11-25,
